Schedule from MS Project, 2025-09-04 to 2025-10-20, costs in ₫, A marks actual dates.

## Calendars

- Standard: Mon-Sat 06:00-11:00, 13:00-17:00; Sun off.

## Resources

| Resource | Rate |
| --- | --- |
| XD Bùi Văn Quý | 75000 |
| XD Phạm Văn Luận | 50000 |
| XD Đinh Ngọc Điệp | 50000 |
| XD Lê Khắc Tới | 50000 |
| XD Đỗ Huy Văn | 43750 |
| XD Vũ Văn Luân | 43750 |
| XD Nguyễn Ngọc Sơn | 37500 |
| XD Bùi Văn Minh | 37500 |
| XD Nguyễn Văn Bình | 37500 |
| XD Lê Khắc Ninh | 37500 |
| GC Nguyễn Hữu Hoàn | 75000 |
| GC Lê Quang Lập | 50000 |
| GC Lê Tuấn Hải | 50000 |
| GC Nguyễn Quang Ngọc | 50000 |
| GC Trần Thế Anh | 43750 |
| GC Trịnh Văn Đồng | 43750 |
| GC Trần Mạnh Dũng | 37500 |
| GC Trịnh Văn Công | 37500 |
| GC Hoàng Văn Hiệp | 37500 |
| GC Hoàng Văn Tư | 37500 |
| KC Phạm Đức An | 87500 |
| KC Nguyễn Văn Cảnh | 50000 |
| KC Lại Đức Thiện | 50000 |
| KC Nguyễn Văn Luân | 50000 |
| KC Đỗ Đăng Tuyên | 43750 |
| KC Nguyễn Thành Chung | 43750 |
| KC Vũ Trọng Hùng | 37500 |
| KC Nguyễn Văn Quý | 37500 |
| KC Lê Đình Lương | 37500 |
| KC Dương Văn Quyết | 37500 |
| KC Nguyễn Đình Giản | 37500 |
| KC Đỗ Trí Thuận | 37500 |
| Đ Phan Quốc Tuấn | 100000 |
| Đ Phạm Tiến Đạt | 56250 |
| Đ Mai Văn Linh | 50000 |
| Đ Đặng Tuấn Hưng | 50000 |
| Đ Nguyễn Văn Sự | 43750 |
| Đ Lê Ngọc Đoàn | 43750 |
| Đ Đinh Hồng Sơn | 37500 |
| Đ Phạm Đình Kiệm | 37500 |
| Đ Hồ Sỹ Đại | 37500 |
| Đ Nguyễn Bá Doanh | 37500 |

## Schedule

| ID | WBS | Task | Duration | Start | Finish | Predecessors | Complete | Remaining | Total slack | Free slack | Resources | Work | Actual work | Cost | Actual cost | Text1 |
| --- | --- | --- | --- | --- | --- | --- | --- | --- | --- | --- | --- | --- | --- | --- | --- | --- |
| 1 | 1 | **TIẾN ĐỘ XÂY DỰNG NHÀ KHO HÓA CHẤT** | 45d | 2025-09-04 A | 2025-10-20 |  | 26% | 33.44d | 0d |  |  | 10272h | 2616.32h | 474,400,000 | 120,888,000 |  |
| 2 | 1.1 | **PHẦN VIỆC XÂY DỰNG** | 45d | 2025-09-04 A | 2025-10-20 |  | 48% | 23.52d | 0d |  |  | 4400h | 2100h | 203,500,000 | 97,125,000 |  |
| 3 | 1.1.1 | Ép cọc nhồi | 14d | 2025-09-04 A | 2025-09-18 |  | 75% | 3.5d | 31d | 0d | XD Bùi Văn Minh; XD Bùi Văn Quý; XD Đinh Ngọc Điệp; XD Đỗ Huy Văn; XD Lê Khắc Ninh; XD Lê Khắc Tới; XD Nguyễn Ngọc Sơn; XD Nguyễn Văn Bình; XD Phạm Văn Luận; XD Vũ Văn Luân | 1120h | 840h | 51,800,000 | 38,850,000 | 100% |
| 4 | 1.1.2 | Đào móng cột, phá đầu cọc | 4d | 2025-09-15 A | 2025-09-19 | 3SF+15d | 75% | 1d | 0.75d | 0d | XD Bùi Văn Minh; XD Bùi Văn Quý; XD Đinh Ngọc Điệp; XD Đỗ Huy Văn; XD Lê Khắc Ninh; XD Lê Khắc Tới; XD Nguyễn Ngọc Sơn; XD Nguyễn Văn Bình; XD Phạm Văn Luận; XD Vũ Văn Luân | 320h | 240h | 14,800,000 | 11,100,000 |  |
| 5 | 1.1.3 | Bê tông lót móng | 1d | 2025-09-19 A | 2025-09-20 | 4 | 75% | 0.25d | 1.5d | 0d | XD Bùi Văn Minh; XD Bùi Văn Quý; XD Đinh Ngọc Điệp; XD Đỗ Huy Văn; XD Lê Khắc Ninh; XD Lê Khắc Tới; XD Nguyễn Ngọc Sơn; XD Nguyễn Văn Bình; XD Phạm Văn Luận; XD Vũ Văn Luân | 80h | 60h | 3,700,000 | 2,775,000 |  |
| 6 | 1.1.4 | Đan thép móng cột | 2d | 2025-09-20 A | 2025-09-22 | 5 | 75% | 0.5d | 27d | 0d | XD Bùi Văn Minh; XD Bùi Văn Quý; XD Đinh Ngọc Điệp; XD Đỗ Huy Văn; XD Lê Khắc Ninh; XD Lê Khắc Tới; XD Nguyễn Ngọc Sơn; XD Nguyễn Văn Bình; XD Phạm Văn Luận; XD Vũ Văn Luân | 160h | 120h | 7,400,000 | 5,550,000 |  |
| 7 | 1.1.5 | Ván khuôn móng cột | 2d | 2025-09-22 A | 2025-09-23 | 6SF+3d | 75% | 0.5d | 1.5d | 0d | XD Bùi Văn Minh; XD Bùi Văn Quý; XD Đinh Ngọc Điệp; XD Đỗ Huy Văn; XD Lê Khắc Ninh; XD Lê Khắc Tới; XD Nguyễn Ngọc Sơn; XD Nguyễn Văn Bình; XD Phạm Văn Luận; XD Vũ Văn Luân | 160h | 120h | 7,400,000 | 5,550,000 |  |
| 8 | 1.1.6 | Bê tông móng cột | 2d | 2025-09-23 A | 2025-09-25 | 7 | 75% | 0.5d | 0.75d | 0d | XD Bùi Văn Minh; XD Bùi Văn Quý; XD Đinh Ngọc Điệp; XD Đỗ Huy Văn; XD Lê Khắc Ninh; XD Lê Khắc Tới; XD Nguyễn Ngọc Sơn; XD Nguyễn Văn Bình; XD Phạm Văn Luận; XD Vũ Văn Luân | 160h | 120h | 7,400,000 | 5,550,000 |  |
| 9 | 1.1.7 | Đan thép rằng móng | 1d | 2025-09-25 A | 2025-09-26 | 8 | 75% | 0.25d | 0.75d | 0d | XD Bùi Văn Minh; XD Bùi Văn Quý; XD Đinh Ngọc Điệp; XD Đỗ Huy Văn; XD Lê Khắc Ninh; XD Lê Khắc Tới; XD Nguyễn Ngọc Sơn; XD Nguyễn Văn Bình; XD Phạm Văn Luận; XD Vũ Văn Luân | 80h | 60h | 3,700,000 | 2,775,000 |  |
| 10 | 1.1.8 | Ván khuôn rằng móng | 1d | 2025-09-26 A | 2025-09-27 | 9 | 75% | 0.25d | 0.75d | 0d | XD Bùi Văn Minh; XD Bùi Văn Quý; XD Đinh Ngọc Điệp; XD Đỗ Huy Văn; XD Lê Khắc Ninh; XD Lê Khắc Tới; XD Nguyễn Ngọc Sơn; XD Nguyễn Văn Bình; XD Phạm Văn Luận; XD Vũ Văn Luân | 80h | 60h | 3,700,000 | 2,775,000 |  |
| 11 | 1.1.9 | Bê tông rằng móng | 1d | 2025-09-27 A | 2025-09-29 | 10 | 75% | 0.25d | 2.25d | 0d | XD Bùi Văn Minh; XD Bùi Văn Quý; XD Đinh Ngọc Điệp; XD Đỗ Huy Văn; XD Lê Khắc Ninh; XD Lê Khắc Tới; XD Nguyễn Ngọc Sơn; XD Nguyễn Văn Bình; XD Phạm Văn Luận; XD Vũ Văn Luân | 80h | 60h | 3,700,000 | 2,775,000 |  |
| 12 | 1.1.10 | Xây tường móng | 3d | 2025-09-29 A | 2025-10-01 | 11 | 75% | 0.75d | 0.5d | 0d | XD Bùi Văn Minh; XD Bùi Văn Quý; XD Đinh Ngọc Điệp; XD Đỗ Huy Văn; XD Lê Khắc Ninh; XD Lê Khắc Tới; XD Nguyễn Ngọc Sơn; XD Nguyễn Văn Bình; XD Phạm Văn Luận; XD Vũ Văn Luân | 240h | 180h | 11,100,000 | 8,325,000 |  |
| 13 | 1.1.11 | San cát, đá, đầm lèn nền nhà | 2d | 2025-10-02 A | 2025-10-03 | 12 | 25% | 1.5d | 0.02d | 0d | XD Bùi Văn Minh; XD Bùi Văn Quý; XD Đinh Ngọc Điệp; XD Đỗ Huy Văn; XD Lê Khắc Ninh; XD Lê Khắc Tới; XD Nguyễn Ngọc Sơn; XD Nguyễn Văn Bình; XD Phạm Văn Luận; XD Vũ Văn Luân | 160h | 40h | 7,400,000 | 1,850,000 |  |
| 14 | 1.1.12 | Xây tườn nhà | 5d | 2025-10-03 A | 2025-10-09 | 13 | 23% | 3.85d | 1d | 0d | XD Bùi Văn Minh; XD Bùi Văn Quý; XD Đinh Ngọc Điệp; XD Đỗ Huy Văn; XD Lê Khắc Ninh; XD Lê Khắc Tới; XD Nguyễn Ngọc Sơn; XD Nguyễn Văn Bình; XD Phạm Văn Luận; XD Vũ Văn Luân | 400h | 92h | 18,500,000 | 4,255,000 |  |
| 15 | 1.1.13 | Chát tường nhà | 4d | 2025-10-09 A | 2025-10-13 | 14 | 33% | 2.68d | 0.03d | 0d | XD Bùi Văn Minh; XD Bùi Văn Quý; XD Đinh Ngọc Điệp; XD Đỗ Huy Văn; XD Lê Khắc Ninh; XD Lê Khắc Tới; XD Nguyễn Ngọc Sơn; XD Nguyễn Văn Bình; XD Phạm Văn Luận; XD Vũ Văn Luân | 320h | 105.6h | 14,800,000 | 4,884,000 |  |
| 16 | 1.1.14 | Đổ bê tông nền nhà, bê tông cửa ra vào | 3d | 2025-10-13 A | 2025-10-16 | 15 | 1% | 2.97d | 0d |  | XD Bùi Văn Minh; XD Bùi Văn Quý; XD Đinh Ngọc Điệp; XD Đỗ Huy Văn; XD Lê Khắc Ninh; XD Lê Khắc Tới; XD Nguyễn Ngọc Sơn; XD Nguyễn Văn Bình; XD Phạm Văn Luận; XD Vũ Văn Luân | 240h | 2.4h | 11,100,000 | 111,000 |  |
| 17 | 1.1.15 | Sơn tườn nhà, nền nhà | 3d | 2025-10-16 | 2025-10-20 | 15FS+3d |  |  | 1d |  | XD Bùi Văn Minh; XD Bùi Văn Quý; XD Đinh Ngọc Điệp; XD Đỗ Huy Văn; XD Lê Khắc Ninh; XD Lê Khắc Tới; XD Nguyễn Ngọc Sơn; XD Nguyễn Văn Bình; XD Phạm Văn Luận; XD Vũ Văn Luân | 240h |  | 11,100,000 |  |  |
| 18 | 1.1.16 | Làm rãnh thoát nước | 3d | 2025-10-16 | 2025-10-20 | 16 |  |  | 1d |  | XD Bùi Văn Minh; XD Bùi Văn Quý; XD Đinh Ngọc Điệp; XD Đỗ Huy Văn; XD Lê Khắc Ninh; XD Lê Khắc Tới; XD Nguyễn Ngọc Sơn; XD Nguyễn Văn Bình; XD Phạm Văn Luận; XD Vũ Văn Luân | 240h |  | 11,100,000 |  |  |
| 19 | 1.1.17 | Rải đá xung quanh nhà kho | 4d | 2025-10-16 | 2025-10-20 | 16 |  |  | 0d |  | XD Bùi Văn Minh; XD Bùi Văn Quý; XD Đinh Ngọc Điệp; XD Đỗ Huy Văn; XD Lê Khắc Ninh; XD Lê Khắc Tới; XD Nguyễn Ngọc Sơn; XD Nguyễn Văn Bình; XD Phạm Văn Luận; XD Vũ Văn Luân | 320h |  | 14,800,000 |  |  |
| 20 | 1.2 | **LÀM ĐƯỜNG VÀO KHO HÓA CHẤT** | 6d | 2025-09-15 A | 2025-09-22 |  | 10% | 5.42d | 28d |  |  | 480h | 46.4h | 22,200,000 | 2,146,000 |  |
| 21 | 1.2.1 | Làm sạch cỏ, múc lớp đất tạp bề mặt | 1d | 2025-09-15 A | 2025-09-16 | 4SF+1d | 23% | 0.77d | 0.23d | 0d | XD Bùi Văn Minh; XD Bùi Văn Quý; XD Đinh Ngọc Điệp; XD Đỗ Huy Văn; XD Lê Khắc Ninh; XD Lê Khắc Tới; XD Nguyễn Ngọc Sơn; XD Nguyễn Văn Bình; XD Phạm Văn Luận; XD Vũ Văn Luân | 80h | 18.4h | 3,700,000 | 851,000 |  |
| 22 | 1.2.2 | Đổ cát tạo nền đương | 1d | 2025-09-16 A | 2025-09-17 | 21 | 23% | 0.77d | 0.08d | 0d | XD Bùi Văn Minh; XD Bùi Văn Quý; XD Đinh Ngọc Điệp; XD Đỗ Huy Văn; XD Lê Khắc Ninh; XD Lê Khắc Tới; XD Nguyễn Ngọc Sơn; XD Nguyễn Văn Bình; XD Phạm Văn Luận; XD Vũ Văn Luân | 80h | 18.4h | 3,700,000 | 851,000 |  |
| 23 | 1.2.3 | Đổ đá, lu đường, lớp đá 4x6 dầy 300mm | 2d | 2025-09-17 A | 2025-09-19 | 22 | 4% | 1.92d | 0.04d | 0d | XD Bùi Văn Minh; XD Bùi Văn Quý; XD Đinh Ngọc Điệp; XD Đỗ Huy Văn; XD Lê Khắc Ninh; XD Lê Khắc Tới; XD Nguyễn Ngọc Sơn; XD Nguyễn Văn Bình; XD Phạm Văn Luận; XD Vũ Văn Luân | 160h | 6.4h | 7,400,000 | 296,000 |  |
| 24 | 1.2.4 | Đổ bê tông đường M250 đa 1x2 dầy 200mm | 2d | 2025-09-19 A | 2025-09-22 | 23 | 2% | 1.96d | 28d |  | XD Bùi Văn Minh; XD Bùi Văn Quý; XD Đinh Ngọc Điệp; XD Đỗ Huy Văn; XD Lê Khắc Ninh; XD Lê Khắc Tới; XD Nguyễn Ngọc Sơn; XD Nguyễn Văn Bình; XD Phạm Văn Luận; XD Vũ Văn Luân | 160h | 3.2h | 7,400,000 | 148,000 |  |

| ID | WBS | Task | Type | Duration | Start | Finish | Predecessors | Complete | Remaining | Total slack | Free slack | Constraint | Resources | Work | Actual work | Cost | Actual cost |
| --- | --- | --- | --- | --- | --- | --- | --- | --- | --- | --- | --- | --- | --- | --- | --- | --- | --- |
| 25 | 1.3 | **BÃI ĐỂ THÙNG HÓA CHẤT** |  | 4d | 2025-09-15 A | 2025-09-19 |  | 12% | 3.52d | 30d |  |  |  | 320h | 38.4h | 14,800,000 | 1,776,000 |
| 26 | 1.3.1 | Làm sạch cỏ, múc lớp đất tạp bề mặt |  | 1d | 2025-09-15 A | 2025-09-16 | 4SF+1d | 6% | 0.94d | 0.34d | 0d |  | XD Bùi Văn Minh; XD Bùi Văn Quý; XD Đinh Ngọc Điệp; XD Đỗ Huy Văn; XD Lê Khắc Ninh; XD Lê Khắc Tới; XD Nguyễn Ngọc Sơn; XD Nguyễn Văn Bình; XD Phạm Văn Luận; XD Vũ Văn Luân | 80h | 4.8h | 3,700,000 | 222,000 |
| 27 | 1.3.2 | Đổ cát tạo nền đương |  | 1d | 2025-09-16 A | 2025-09-17 | 26 | 34% | 0.66d | 0.08d | 0d |  | XD Bùi Văn Minh; XD Bùi Văn Quý; XD Đinh Ngọc Điệp; XD Đỗ Huy Văn; XD Lê Khắc Ninh; XD Lê Khắc Tới; XD Nguyễn Ngọc Sơn; XD Nguyễn Văn Bình; XD Phạm Văn Luận; XD Vũ Văn Luân | 80h | 27.2h | 3,700,000 | 1,258,000 |
| 28 | 1.3.3 | Đổ đá, lu đường, lớp đá 4x6 dầy 300mm |  | 2d | 2025-09-17 A | 2025-09-19 | 27 | 4% | 1.92d | 30d |  |  | XD Bùi Văn Minh; XD Bùi Văn Quý; XD Đinh Ngọc Điệp; XD Đỗ Huy Văn; XD Lê Khắc Ninh; XD Lê Khắc Tới; XD Nguyễn Ngọc Sơn; XD Nguyễn Văn Bình; XD Phạm Văn Luận; XD Vũ Văn Luân | 160h | 6.4h | 7,400,000 | 296,000 |
| 29 | 1.4 | **XÂY DỰNG HỐ GA CHỨA NƯỚC RỬA SÀN** |  | 4d | 2025-09-15 A | 2025-09-19 |  | 4% | 3.83d | 30d |  |  |  | 480h | 20h | 22,200,000 | 925,000 |
| 30 | 1.4.1 | Đào đất móng |  | 1d | 2025-09-15 A | 2025-09-16 | 4SF+1d | 1% | 0.99d | 0.03d | 0d |  | XD Bùi Văn Minh; XD Bùi Văn Quý; XD Đinh Ngọc Điệp; XD Đỗ Huy Văn; XD Lê Khắc Ninh; XD Lê Khắc Tới; XD Nguyễn Ngọc Sơn; XD Nguyễn Văn Bình; XD Phạm Văn Luận; XD Vũ Văn Luân | 80h | 0.8h | 3,700,000 | 37,000 |
| 31 | 1.4.2 | Bê tông lót hố ga |  | 1d | 2025-09-16 A | 2025-09-17 | 30 | 3% | 0.97d | 0.07d | 0d |  | XD Bùi Văn Minh; XD Bùi Văn Quý; XD Đinh Ngọc Điệp; XD Đỗ Huy Văn; XD Lê Khắc Ninh; XD Lê Khắc Tới; XD Nguyễn Ngọc Sơn; XD Nguyễn Văn Bình; XD Phạm Văn Luận; XD Vũ Văn Luân | 80h | 2.4h | 3,700,000 | 111,000 |
| 32 | 1.4.3 | Đan thép tấm đan hố ga |  | 1d | 2025-09-16 A | 2025-09-17 | 30 | 5% | 0.95d | 0.06d | 0d |  | XD Bùi Văn Minh; XD Bùi Văn Quý; XD Đinh Ngọc Điệp; XD Đỗ Huy Văn; XD Lê Khắc Ninh; XD Lê Khắc Tới; XD Nguyễn Ngọc Sơn; XD Nguyễn Văn Bình; XD Phạm Văn Luận; XD Vũ Văn Luân | 80h | 4h | 3,700,000 | 185,000 |
| 33 | 1.4.4 | Bê tông tấm đan hố ga |  | 1d | 2025-09-17 A | 2025-09-18 | 32 | 6% | 0.94d | 31d |  |  | XD Bùi Văn Minh; XD Bùi Văn Quý; XD Đinh Ngọc Điệp; XD Đỗ Huy Văn; XD Lê Khắc Ninh; XD Lê Khắc Tới; XD Nguyễn Ngọc Sơn; XD Nguyễn Văn Bình; XD Phạm Văn Luận; XD Vũ Văn Luân | 80h | 4.8h | 3,700,000 | 222,000 |
| 34 | 1.4.5 | Xây tường hố ga |  | 1d | 2025-09-17 A | 2025-09-18 | 31 | 7% | 0.93d | 0.03d | 0d |  | XD Bùi Văn Minh; XD Bùi Văn Quý; XD Đinh Ngọc Điệp; XD Đỗ Huy Văn; XD Lê Khắc Ninh; XD Lê Khắc Tới; XD Nguyễn Ngọc Sơn; XD Nguyễn Văn Bình; XD Phạm Văn Luận; XD Vũ Văn Luân | 80h | 5.6h | 3,700,000 | 259,000 |
| 35 | 1.4.6 | Chát tường hố ga |  | 1d | 2025-09-18 A | 2025-09-19 | 34 | 3% | 0.97d | 30d |  |  | XD Bùi Văn Minh; XD Bùi Văn Quý; XD Đinh Ngọc Điệp; XD Đỗ Huy Văn; XD Lê Khắc Ninh; XD Lê Khắc Tới; XD Nguyễn Ngọc Sơn; XD Nguyễn Văn Bình; XD Phạm Văn Luận; XD Vũ Văn Luân | 80h | 2.4h | 3,700,000 | 111,000 |
| 36 | 1.5 | **GIA CÔNG, CHẾ TẠO VÀ LẮP DỰNG KẾT CẤU THÉP** |  | 42d | 2025-09-04 A | 2025-10-17 |  | 8% | 38.45d | 3d |  |  |  | 4592h | 411.52h | 211,700,000 | 18,916,000 |
| 37 | 1.5.1 | **GIA CÔNG CHẾ TẠO VÀ VẬN CHUYỂN KCT ĐẾN CÔNG TRƯƠNG** |  | 27d | 2025-09-04 A | 2025-10-01 |  | 4% | 25.8d | 18d |  |  |  | 2960h | 131.2h | 136,900,000 | 6,068,000 |
| 38 | 1.5.1.1 | Công tác mua sắm vật tư KCT |  | 10d | 2025-09-04 A | 2025-09-13 | 3SF+10d | 6% | 9.4d | 0.12d | 0d |  | GC Hoàng Văn Hiệp; GC Hoàng Văn Tư; GC Lê Quang Lập; GC Lê Tuấn Hải; GC Nguyễn Hữu Hoàn; GC Nguyễn Quang Ngọc; GC Trần Mạnh Dũng; GC Trần Thế Anh; GC Trịnh Văn Công; GC Trịnh Văn Đồng | 800h | 48h | 37,000,000 | 2,220,000 |
| 39 | 1.5.1.2 | Gia công, chế tạo cột |  | 5d | 2025-09-13 A | 2025-09-19 | 38 | 7% | 4.65d | 0.1d | 0d |  | GC Hoàng Văn Hiệp; GC Hoàng Văn Tư; GC Lê Quang Lập; GC Lê Tuấn Hải; GC Nguyễn Hữu Hoàn; GC Nguyễn Quang Ngọc; GC Trần Mạnh Dũng; GC Trần Thế Anh; GC Trịnh Văn Công; GC Trịnh Văn Đồng | 400h | 28h | 18,500,000 | 1,295,000 |
| 40 | 1.5.1.3 | Sơn và vận chuyển KCT tới công trương |  | 2d | 2025-09-19 A | 2025-09-22 | 39 | 5% | 1.9d | 12.02d | 12d |  | GC Hoàng Văn Hiệp; GC Hoàng Văn Tư; GC Lê Quang Lập; GC Lê Tuấn Hải; GC Nguyễn Hữu Hoàn; GC Nguyễn Quang Ngọc; GC Trần Mạnh Dũng; GC Trần Thế Anh; GC Trịnh Văn Công; GC Trịnh Văn Đồng | 160h | 8h | 7,400,000 | 370,000 |
| 41 | 1.5.1.4 | Gia công, chế tạo vì kèo, xà gồ |  | 8d | 2025-09-13 A | 2025-09-22 | 38 | 4% | 7.68d | 0.09d | 0d |  | GC Hoàng Văn Hiệp; GC Hoàng Văn Tư; GC Lê Quang Lập; GC Lê Tuấn Hải; GC Nguyễn Hữu Hoàn; GC Nguyễn Quang Ngọc; GC Trần Mạnh Dũng; GC Trần Thế Anh; GC Trịnh Văn Công; GC Trịnh Văn Đồng | 640h | 25.6h | 29,600,000 | 1,184,000 |
| 42 | 1.5.1.5 | Sơn và vận chuyển KCT tới công trương |  | 3d | 2025-09-23 A | 2025-09-25 | 41 | 3% | 2.91d | 24d |  |  | GC Hoàng Văn Hiệp; GC Hoàng Văn Tư; GC Lê Quang Lập; GC Lê Tuấn Hải; GC Nguyễn Hữu Hoàn; GC Nguyễn Quang Ngọc; GC Trần Mạnh Dũng; GC Trần Thế Anh; GC Trịnh Văn Công; GC Trịnh Văn Đồng | 240h | 7.2h | 11,100,000 | 333,000 |
| 43 | 1.5.1.6 | Gia công, chế tạo cửa đi |  | 6d | 2025-09-13 A | 2025-09-20 | 38 | 2% | 5.88d | 0.06d | 0d |  | GC Hoàng Văn Hiệp; GC Hoàng Văn Tư; GC Lê Quang Lập; GC Lê Tuấn Hải; GC Nguyễn Hữu Hoàn; GC Nguyễn Quang Ngọc; GC Trần Mạnh Dũng; GC Trần Thế Anh; GC Trịnh Văn Công; GC Trịnh Văn Đồng | 480h | 9.6h | 22,200,000 | 444,000 |
| 44 | 1.5.1.7 | Sơn và vận chuyển KCT tới công trương |  | 3d | 2025-09-29 A | 2025-10-01 | 43FS+8d | 2% | 2.94d | 18d |  |  | GC Hoàng Văn Hiệp; GC Hoàng Văn Tư; GC Lê Quang Lập; GC Lê Tuấn Hải; GC Nguyễn Hữu Hoàn; GC Nguyễn Quang Ngọc; GC Trần Mạnh Dũng; GC Trần Thế Anh; GC Trịnh Văn Công; GC Trịnh Văn Đồng | 240h | 4.8h | 11,100,000 | 222,000 |
| 45 | 1.5.2 | **LẮP DỰNG KẾT CẤU THÉP** |  | 13d | 2025-10-03 A | 2025-10-17 |  | 17% | 10.77d | 3d |  |  |  | 1632h | 280.32h | 74,800,000 | 12,848,000 |
| 46 | 1.5.2.1 | Lắp dựng cột |  | 2d | 2025-10-03 A | 2025-10-06 | 13, 40 | 1% | 1.98d | 14d | 0d |  | KC Đỗ Đăng Tuyên; KC Đỗ Trí Thuận; KC Dương Văn Quyết; KC Lại Đức Thiện; KC Lê Đình Lương; KC Nguyễn Đình Giản; KC Nguyễn Thành Chung; KC Nguyễn Văn Cảnh; KC Nguyễn Văn Luân; KC Nguyễn Văn Quý; KC Phạm Đức An; KC Vũ Trọng Hùng | 192h | 1.92h | 8,800,000 | 88,000 |
| 47 | 1.5.2.2 | Lắp dựng vì kèo, xà gồ |  | 5d | 2025-10-04 A | 2025-10-10 | 46SF+6d | 2% | 4.9d | 0.09d | 0d |  | KC Đỗ Đăng Tuyên; KC Đỗ Trí Thuận; KC Dương Văn Quyết; KC Lại Đức Thiện; KC Lê Đình Lương; KC Nguyễn Đình Giản; KC Nguyễn Thành Chung; KC Nguyễn Văn Cảnh; KC Nguyễn Văn Luân; KC Nguyễn Văn Quý; KC Phạm Đức An; KC Vũ Trọng Hùng | 480h | 9.6h | 22,000,000 | 440,000 |
| 48 | 1.5.2.3 | Hoàn thành lắp đặt kết cấu thép | milestone | 0d | 2025-10-10 A | 2025-10-10 |  | 3% | 0d | 9.88d |  | start no earlier than 2025-10-10 | KC Đỗ Đăng Tuyên; KC Đỗ Trí Thuận; KC Dương Văn Quyết; KC Lại Đức Thiện; KC Lê Đình Lương; KC Nguyễn Đình Giản; KC Nguyễn Thành Chung; KC Nguyễn Văn Cảnh; KC Nguyễn Văn Luân; KC Nguyễn Văn Quý; KC Phạm Đức An; KC Vũ Trọng Hùng |  |  |  |  |
| 49 | 1.5.2.4 | Bắn tôn mái, tôn thưng |  | 4d | 2025-10-10 A | 2025-10-14 | 47 | 4% | 3.84d | 0.22d | 0d |  | KC Đỗ Đăng Tuyên; KC Đỗ Trí Thuận; KC Dương Văn Quyết; KC Lại Đức Thiện; KC Lê Đình Lương; KC Nguyễn Đình Giản; KC Nguyễn Thành Chung; KC Nguyễn Văn Cảnh; KC Nguyễn Văn Luân; KC Nguyễn Văn Quý; KC Phạm Đức An; KC Vũ Trọng Hùng | 384h | 15.36h | 17,600,000 | 704,000 |
| 50 | 1.5.2.5 | Lắp đặt phụ kiên, cửa chớp, máng nước |  | 3d | 2025-10-14 A | 2025-10-17 | 49 | 55% | 1.35d | 3d |  |  | KC Đỗ Đăng Tuyên; KC Đỗ Trí Thuận; KC Dương Văn Quyết; KC Lại Đức Thiện; KC Lê Đình Lương; KC Nguyễn Đình Giản; KC Nguyễn Thành Chung; KC Nguyễn Văn Cảnh; KC Nguyễn Văn Luân; KC Nguyễn Văn Quý; KC Phạm Đức An; KC Vũ Trọng Hùng | 288h | 158.4h | 13,200,000 | 7,260,000 |
| 51 | 1.5.2.6 | Lắp đặt cửa chính, cửa phụ nhà kho |  | 3d | 2025-10-14 A | 2025-10-17 | 49 | 33% | 2.01d | 3d |  |  | KC Đỗ Đăng Tuyên; KC Đỗ Trí Thuận; KC Dương Văn Quyết; KC Lại Đức Thiện; KC Lê Đình Lương; KC Nguyễn Đình Giản; KC Nguyễn Thành Chung; KC Nguyễn Văn Cảnh; KC Nguyễn Văn Luân; KC Nguyễn Văn Quý; KC Phạm Đức An; KC Vũ Trọng Hùng | 288h | 95.04h | 13,200,000 | 4,356,000 |

| ID | WBS | Task | Type | Duration | Start | Finish | Predecessors | Complete | Remaining | Total slack | Free slack | Constraint | Resources | Work | Actual work | Cost | Actual cost |
| --- | --- | --- | --- | --- | --- | --- | --- | --- | --- | --- | --- | --- | --- | --- | --- | --- | --- |
| 52 | 2 | **PHẦN PCCC** |  | 11d | 2025-10-09 A | 2025-10-20 |  | 27% | 8.05d | 0d |  |  |  | 1440h | 385.6h | 71,100,000 | 19,039,000 |
| 53 | 2.1 | Lắp đặt phần ống cứu hỏa |  | 4d | 2025-10-09 A | 2025-10-13 | 14 | 25% | 3d | 7d |  |  | Đ Đặng Tuấn Hưng; Đ Đinh Hồng Sơn; Đ Hồ Sỹ Đại; Đ Lê Ngọc Đoàn; Đ Mai Văn Linh; Đ Nguyễn Bá Doanh; Đ Nguyễn Văn Sự; Đ Phạm Đình Kiệm; Đ Phạm Tiến Đạt; Đ Phan Quốc Tuấn | 320h | 80h | 15,800,000 | 3,950,000 |
| 54 | 2.2 | Lắp đặt tủ cứu hỏa và bình chữa cháy |  | 2d | 2025-10-13 A | 2025-10-15 | 15 | 15% | 1.7d | 5d |  |  | Đ Đặng Tuấn Hưng; Đ Đinh Hồng Sơn; Đ Hồ Sỹ Đại; Đ Lê Ngọc Đoàn; Đ Mai Văn Linh; Đ Nguyễn Bá Doanh; Đ Nguyễn Văn Sự; Đ Phạm Đình Kiệm; Đ Phạm Tiến Đạt; Đ Phan Quốc Tuấn | 160h | 24h | 7,900,000 | 1,185,000 |
| 55 | 2.3 | Lắp đặt ống nhựa luồn dây báo cháy |  | 5d | 2025-10-10 A | 2025-10-15 | 47 | 22% | 3.9d | 0.66d | 0d |  | Đ Đặng Tuấn Hưng; Đ Đinh Hồng Sơn; Đ Hồ Sỹ Đại; Đ Lê Ngọc Đoàn; Đ Mai Văn Linh; Đ Nguyễn Bá Doanh; Đ Nguyễn Văn Sự; Đ Phạm Đình Kiệm; Đ Phạm Tiến Đạt; Đ Phan Quốc Tuấn | 400h | 88h | 19,750,000 | 4,345,000 |
| 56 | 2.4 | Lắp đặt đầu báo cháy và thiết bị báo cháy |  | 2d | 2025-10-10 A | 2025-10-11 | 47 | 22% | 1.56d | 8d |  |  | Đ Đặng Tuấn Hưng; Đ Đinh Hồng Sơn; Đ Hồ Sỹ Đại; Đ Lê Ngọc Đoàn; Đ Mai Văn Linh; Đ Nguyễn Bá Doanh; Đ Nguyễn Văn Sự; Đ Phạm Đình Kiệm; Đ Phạm Tiến Đạt; Đ Phan Quốc Tuấn | 160h | 35.2h | 7,900,000 | 1,738,000 |
| 57 | 2.5 | Kéo cáp báo cháy |  | 2d | 2025-10-15 A | 2025-10-17 | 55 | 33% | 1.34d | 1.32d | 0d |  | Đ Đặng Tuấn Hưng; Đ Đinh Hồng Sơn; Đ Hồ Sỹ Đại; Đ Lê Ngọc Đoàn; Đ Mai Văn Linh; Đ Nguyễn Bá Doanh; Đ Nguyễn Văn Sự; Đ Phạm Đình Kiệm; Đ Phạm Tiến Đạt; Đ Phan Quốc Tuấn | 160h | 52.8h | 7,900,000 | 2,607,000 |
| 58 | 2.6 | Đấu nối cáp báo cháy |  | 3d | 2025-10-17 A | 2025-10-20 | 57 | 44% | 1.68d | 0d |  |  | Đ Đặng Tuấn Hưng; Đ Đinh Hồng Sơn; Đ Hồ Sỹ Đại; Đ Lê Ngọc Đoàn; Đ Mai Văn Linh; Đ Nguyễn Bá Doanh; Đ Nguyễn Văn Sự; Đ Phạm Đình Kiệm; Đ Phạm Tiến Đạt; Đ Phan Quốc Tuấn | 240h | 105.6h | 11,850,000 | 5,214,000 |
| 59 | 3 | **PHẦN ĐIỆN** |  | 44.12d | 2025-09-04 A | 2025-10-20 |  | 25% | 33.03d | 0.88d |  |  |  | 2400h | 603.2h | 118,500,000 | 29,783,000 |
| 60 | 3.1 | **Tiếp địa** |  | 3d | 2025-10-02 A | 2025-10-04 |  | 28% | 2.17d | 15d |  |  |  | 480h | 132h | 23,700,000 | 6,517,500 |
| 61 | 3.1.1 | Đào đất và chôn đây cáp ngầm |  | 3d | 2025-10-02 A | 2025-10-04 | 12 | 22% | 2.34d | 15d |  |  | Đ Đặng Tuấn Hưng; Đ Đinh Hồng Sơn; Đ Hồ Sỹ Đại; Đ Lê Ngọc Đoàn; Đ Mai Văn Linh; Đ Nguyễn Bá Doanh; Đ Nguyễn Văn Sự; Đ Phạm Đình Kiệm; Đ Phạm Tiến Đạt; Đ Phan Quốc Tuấn | 240h | 52.8h | 11,850,000 | 2,607,000 |
| 62 | 3.1.2 | Đóng cọc tiếp địa |  | 3d | 2025-10-02 A | 2025-10-04 | 12 | 33% | 2.01d | 15d |  |  | Đ Đặng Tuấn Hưng; Đ Đinh Hồng Sơn; Đ Hồ Sỹ Đại; Đ Lê Ngọc Đoàn; Đ Mai Văn Linh; Đ Nguyễn Bá Doanh; Đ Nguyễn Văn Sự; Đ Phạm Đình Kiệm; Đ Phạm Tiến Đạt; Đ Phan Quốc Tuấn | 240h | 79.2h | 11,850,000 | 3,910,500 |
| 63 | 3.2 | **Chống sét** |  | 3d | 2025-10-14 A | 2025-10-17 |  | 22% | 2.34d | 3d |  |  |  | 320h | 70.4h | 15,800,000 | 3,476,000 |
| 64 | 3.2.1 | Lắp kim thu lôi |  | 1d | 2025-10-14 A | 2025-10-15 | 49 | 22% | 0.78d | 5d |  |  | Đ Đặng Tuấn Hưng; Đ Đinh Hồng Sơn; Đ Hồ Sỹ Đại; Đ Lê Ngọc Đoàn; Đ Mai Văn Linh; Đ Nguyễn Bá Doanh; Đ Nguyễn Văn Sự; Đ Phạm Đình Kiệm; Đ Phạm Tiến Đạt; Đ Phan Quốc Tuấn | 80h | 17.6h | 3,950,000 | 869,000 |
| 65 | 3.2.2 | Đi dây chống sét |  | 3d | 2025-10-14 A | 2025-10-17 | 49 | 22% | 2.34d | 3d |  |  | Đ Đặng Tuấn Hưng; Đ Đinh Hồng Sơn; Đ Hồ Sỹ Đại; Đ Lê Ngọc Đoàn; Đ Mai Văn Linh; Đ Nguyễn Bá Doanh; Đ Nguyễn Văn Sự; Đ Phạm Đình Kiệm; Đ Phạm Tiến Đạt; Đ Phan Quốc Tuấn | 240h | 52.8h | 11,850,000 | 2,607,000 |
| 66 | 3.3 | **Chiếu sáng** |  | 7d | 2025-10-10 A | 2025-10-17 |  | 21% | 5.55d | 3d |  |  |  | 960h | 199.2h | 47,400,000 | 9,835,500 |
| 67 | 3.3.1 | Lắp đặt tủ chiếu sáng |  | 1d | 2025-10-10 A | 2025-10-10 | 47 | 15% | 0.85d | 9d |  |  | Đ Đặng Tuấn Hưng; Đ Đinh Hồng Sơn; Đ Hồ Sỹ Đại; Đ Lê Ngọc Đoàn; Đ Mai Văn Linh; Đ Nguyễn Bá Doanh; Đ Nguyễn Văn Sự; Đ Phạm Đình Kiệm; Đ Phạm Tiến Đạt; Đ Phan Quốc Tuấn | 80h | 12h | 3,950,000 | 592,500 |
| 68 | 3.3.2 | Lắp đặt ống luồn cáp |  | 2d | 2025-10-10 A | 2025-10-11 | 47 | 23% | 1.54d | 0.25d | 0d |  | Đ Đặng Tuấn Hưng; Đ Đinh Hồng Sơn; Đ Hồ Sỹ Đại; Đ Lê Ngọc Đoàn; Đ Mai Văn Linh; Đ Nguyễn Bá Doanh; Đ Nguyễn Văn Sự; Đ Phạm Đình Kiệm; Đ Phạm Tiến Đạt; Đ Phan Quốc Tuấn | 160h | 36.8h | 7,900,000 | 1,817,000 |
| 69 | 3.3.3 | Kéo cáp chiếu sáng |  | 1d | 2025-10-11 A | 2025-10-13 | 68 | 25% | 0.75d | 1.32d | 0d |  | Đ Đặng Tuấn Hưng; Đ Đinh Hồng Sơn; Đ Hồ Sỹ Đại; Đ Lê Ngọc Đoàn; Đ Mai Văn Linh; Đ Nguyễn Bá Doanh; Đ Nguyễn Văn Sự; Đ Phạm Đình Kiệm; Đ Phạm Tiến Đạt; Đ Phan Quốc Tuấn | 80h | 20h | 3,950,000 | 987,500 |
| 70 | 3.3.4 | Lắp đặt bóng đèn |  | 3d | 2025-10-10 A | 2025-10-13 | 47 | 3% | 2.91d | 7d |  |  | Đ Đặng Tuấn Hưng; Đ Đinh Hồng Sơn; Đ Hồ Sỹ Đại; Đ Lê Ngọc Đoàn; Đ Mai Văn Linh; Đ Nguyễn Bá Doanh; Đ Nguyễn Văn Sự; Đ Phạm Đình Kiệm; Đ Phạm Tiến Đạt; Đ Phan Quốc Tuấn | 240h | 7.2h | 11,850,000 | 355,500 |
| 71 | 3.3.5 | Lắp đặt ổ cắm và quặt |  | 1d | 2025-10-10 A | 2025-10-10 | 47 | 22% | 0.78d | 9d |  |  | Đ Đặng Tuấn Hưng; Đ Đinh Hồng Sơn; Đ Hồ Sỹ Đại; Đ Lê Ngọc Đoàn; Đ Mai Văn Linh; Đ Nguyễn Bá Doanh; Đ Nguyễn Văn Sự; Đ Phạm Đình Kiệm; Đ Phạm Tiến Đạt; Đ Phan Quốc Tuấn | 80h | 17.6h | 3,950,000 | 869,000 |
| 72 | 3.3.6 | Đấu nối cáp chiếu sáng |  | 4d | 2025-10-13 A | 2025-10-17 | 69 | 33% | 2.68d | 3d |  |  | Đ Đặng Tuấn Hưng; Đ Đinh Hồng Sơn; Đ Hồ Sỹ Đại; Đ Lê Ngọc Đoàn; Đ Mai Văn Linh; Đ Nguyễn Bá Doanh; Đ Nguyễn Văn Sự; Đ Phạm Đình Kiệm; Đ Phạm Tiến Đạt; Đ Phan Quốc Tuấn | 320h | 105.6h | 15,800,000 | 5,214,000 |
| 73 | 3.4 | **Kéo cáp nguồn chiếu sáng và báo cháy trên PR** |  | 44.12d | 2025-09-04 A | 2025-10-20 |  | 32% | 30.23d | 0.88d |  |  |  | 640h | 201.6h | 31,600,000 | 9,954,000 |
| 74 | 3.4.1 | Lật lắp máng cáp |  | 3d | 2025-09-04 A | 2025-09-06 |  | 15% | 2.55d | 0.44d | 0d |  | Đ Đặng Tuấn Hưng; Đ Đinh Hồng Sơn; Đ Hồ Sỹ Đại; Đ Lê Ngọc Đoàn; Đ Mai Văn Linh; Đ Nguyễn Bá Doanh; Đ Nguyễn Văn Sự; Đ Phạm Đình Kiệm; Đ Phạm Tiến Đạt; Đ Phan Quốc Tuấn | 240h | 36h | 11,850,000 | 1,777,500 |
| 75 | 3.4.2 | Kéo cáp nguồn chiếu sáng |  | 1d | 2025-09-06 A | 2025-09-08 | 74 | 64% | 0.36d | 41d |  |  | Đ Đặng Tuấn Hưng; Đ Đinh Hồng Sơn; Đ Hồ Sỹ Đại; Đ Lê Ngọc Đoàn; Đ Mai Văn Linh; Đ Nguyễn Bá Doanh; Đ Nguyễn Văn Sự; Đ Phạm Đình Kiệm; Đ Phạm Tiến Đạt; Đ Phan Quốc Tuấn | 80h | 51.2h | 3,950,000 | 2,528,000 |
| 76 | 3.4.3 | Kéo cáp nguồn báo cháy |  | 1d | 2025-09-06 A | 2025-09-08 | 74 | 44% | 0.56d | 0.99d | 0d |  | Đ Đặng Tuấn Hưng; Đ Đinh Hồng Sơn; Đ Hồ Sỹ Đại; Đ Lê Ngọc Đoàn; Đ Mai Văn Linh; Đ Nguyễn Bá Doanh; Đ Nguyễn Văn Sự; Đ Phạm Đình Kiệm; Đ Phạm Tiến Đạt; Đ Phan Quốc Tuấn | 80h | 35.2h | 3,950,000 | 1,738,000 |
| 77 | 3.4.4 | Đậy lắp máng cáp |  | 3d | 2025-09-08 A | 2025-09-11 | 76 | 33% | 2.01d | 38d |  |  | Đ Đặng Tuấn Hưng; Đ Đinh Hồng Sơn; Đ Hồ Sỹ Đại; Đ Lê Ngọc Đoàn; Đ Mai Văn Linh; Đ Nguyễn Bá Doanh; Đ Nguyễn Văn Sự; Đ Phạm Đình Kiệm; Đ Phạm Tiến Đạt; Đ Phan Quốc Tuấn | 240h | 79.2h | 11,850,000 | 3,910,500 |
| 78 | 3.4.5 | Bàn giao nhà kho hóa chất | milestone | 0d | 2025-10-20 A | 2025-10-20 |  | 22% | 0d | 0.88d |  | start no earlier than 2025-10-20 | Đ Đặng Tuấn Hưng; Đ Đinh Hồng Sơn; Đ Hồ Sỹ Đại; Đ Lê Ngọc Đoàn; Đ Mai Văn Linh; Đ Nguyễn Bá Doanh; Đ Nguyễn Văn Sự; Đ Phạm Đình Kiệm; Đ Phạm Tiến Đạt; Đ Phan Quốc Tuấn |  |  |  |  |
